# Citco - Phase 2

Schedule from MS Project, 2018-04-25 to 2018-06-21, A marks actual dates.
Temenos

## Calendars

- Standard: Mon-Fri 08:00-12:00, 13:00-17:00; Sat-Sun off. Exceptions (off unless hours are given): 2018-05-01 (May Day).

## Resources

| Resource |
| --- |
| Ben |
| Citco |
| Anish |
| Naveenkumar |
| Dev Team |
| Achuth |
| IPRM |
| Ganesh |
| Aarthi |
| Jeyaganesh |
| NIko Popov |
| PQC |
| Pierre-Marie Born <PBorn@temenos.com> |
| TBD |
| Siva |
| Kannathasan Siva Kumar <sivakumark@temenos.com> |
| Kannathasan Siva Kumar |
| Sekar Murugan |
| Elangovan |
| L1 Testing |
| Murugan |
| Jude |
| ` |

## Schedule

| ID | WBS | Task | Duration | Start | Finish | Predecessors | Complete | Remaining | Baseline start | Baseline finish | Baseline duration | Total slack | Free slack | Constraint | Resources | Work | Actual work |
| --- | --- | --- | --- | --- | --- | --- | --- | --- | --- | --- | --- | --- | --- | --- | --- | --- | --- |
| 1 | 1 | **AA R&R Testing** | 14.5d | 2018-04-25 A | 2018-05-16 |  | 88% | 1.71d | 2018-04-25 | 2018-05-04 | 7d | 26.5d |  |  |  | 144h | 128h |
| 2 | 1.1 | Finalise test cases for execution | 0.5d | 2018-04-25 A | 2018-04-25 A |  | 100% |  | 2018-04-25 | 2018-04-25 | 0.5d |  |  |  | Achuth | 4h | 4h |
| 3 | 1.2 | Document all post installation steps | 0.5d | 2018-04-25 A | 2018-04-25 A | 2 | 100% |  | 2018-04-25 | 2018-04-25 | 0.5d |  |  |  | Dev Team | 4h | 4h |
| 4 | 1.3 | Complete deployment and post installation steps | 1d | 2018-04-25 A | 2018-04-25 A | 3FF | 100% |  | 2018-04-25 | 2018-04-25 | 1d |  |  |  | Naveenkumar; Anish | 16h | 16h |
| 5 | 1.4 | Carry out basic shakedown test to make functional release | 1d | 2018-04-26 A | 2018-04-26 A | 4 | 100% |  | 2018-04-26 | 2018-04-26 | 1d |  |  |  | Naveenkumar | 8h | 8h |
| 6 | 1.5 | Functional Release | 0.5d | 2018-04-27 A | 2018-04-27 A | 5 | 100% |  | 2018-04-27 | 2018-04-27 | 0.5d |  |  |  | Anish | 4h | 4h |
| 7 | 1.6 | Test Execution | 3d | 2018-04-27 A | 2018-05-03 A | 6 | 100% |  | 2018-04-27 | 2018-05-03 | 3d |  |  |  | Naveenkumar | 24h | 24h |
| 8 | 1.7 | Test results documentation | 1d | 2018-05-03 A | 2018-05-04 A | 7 | 100% |  | 2018-05-03 | 2018-05-04 | 1d |  |  |  | Naveenkumar | 8h | 8h |
| 9 | 1.8 | Defects Fix | 6d | 2018-05-03 A | 2018-05-10 A |  | 100% |  |  |  |  |  |  | finish no earlier than 2018-05-10 | Kannathasan Siva Kumar | 48h | 48h |
| 10 | 1.9 | Retesting | 3d | 2018-05-11 A | 2018-05-15 | 9 | 50% | 1.5d |  |  |  | 27.5d | 0d |  | Naveenkumar | 24h | 12h |
| 11 | 1.10 | Package fix (if any) and documentation | 0.5d | 2018-05-16 | 2018-05-16 | 10 |  |  | 2018-05-04 | 2018-05-04 | 0.5d | 27.5d |  | start no earlier than 2018-05-14 | Anish | 4h |  |
| 12 | 2 | **Multi Company Testing (Basic Interest)** | 9.5d | 2018-04-25 A | 2018-05-09 A |  | 100% |  | 2018-04-25 | 2018-05-07 | 7.5d |  |  |  |  | 95.2h | 95.2h |
| 13 | 2.1 | Solution acceptance from Citco | 1d | 2018-04-25 A | 2018-04-25 A |  | 100% |  | 2018-04-25 | 2018-04-25 | 1d |  |  |  | Ben; Citco | 16h | 16h |
| 14 | 2.2 | Coding | 4d | 2018-04-26 A | 2018-05-02 A | 13 | 100% |  | 2018-04-26 | 2018-05-02 | 4d |  |  | finish no earlier than 2018-05-02 | Anish | 32h | 32h |
| 15 | 2.3 | Unit testing | 1d | 2018-05-03 A | 2018-05-03 A | 14 | 100% |  | 2018-05-03 | 2018-05-03 | 1d |  |  |  | Anish | 8h | 8h |
| 16 | 2.4 | Code Review | 2d | 2018-05-03 A | 2018-05-04 A | 14 | 100% |  | 2018-05-03 | 2018-05-03 | 1d |  |  | finish no earlier than 2018-05-04 | Ben | 16h | 16h |
| 17 | 2.5 | PQC Testing | 2d | 2018-05-07 A | 2018-05-08 A | 16 | 100% |  | 2018-05-03 | 2018-05-04 | 2d |  |  | finish no earlier than 2018-05-08 | Aarthi | 16h | 16h |
| 18 | 2.6 | Release | 0.5d | 2018-05-09 A | 2018-05-09 A | 17 | 100% |  | 2018-05-07 | 2018-05-07 | 0.5d |  |  |  | IPRM | 4h | 4h |
| 19 | 2.7 | QC4815 Release | 0.4d | 2018-05-03 A | 2018-05-03 A | 14 | 100% |  | 2018-05-07 | 2018-05-07 | 0.5d |  |  | finish no earlier than 2018-05-03 | Ganesh | 3.2h | 3.2h |
| 20 | 3 | **QC4536-PACS00642164-FX rate does not populate on cross currency transaction** | 18d | 2018-05-04 A | 2018-05-29 A |  | 100% |  |  |  |  |  |  |  |  | 68h | 68h |
| 21 | 3.1 | Analysis | 1d | 2018-05-04 A | 2018-05-04 A |  | 100% |  |  |  |  |  |  | start no earlier than 2018-05-04 | Anish | 8h | 8h |
| 22 | 3.2 | Coding | 1d | 2018-05-21 A | 2018-05-21 A |  | 100% |  |  |  |  |  |  | finish no earlier than 2018-05-07 | Anish | 8h | 8h |
| 23 | 3.3 | Unit Testing | 0.5d | 2018-05-08 A | 2018-05-08 A | 22 | 100% |  |  |  |  |  |  |  | Anish | 4h | 4h |
| 24 | 3.4 | Review | 1d | 2018-05-08 A | 2018-05-09 A | 23 | 100% |  |  |  |  |  |  |  | Ben | 8h | 8h |
| 25 | 3.5 | PQC Testing | 5d | 2018-05-09 A | 2018-05-28 A | 24 | 100% |  |  |  |  |  |  | finish no earlier than 2018-05-28 | Aarthi | 40h | 40h |
| 26 | 3.6 | Release | 1d | 2018-05-29 A | 2018-05-29 A |  | 100% |  |  |  |  |  |  | start no earlier than 2018-05-29 |  |  |  |

| ID | WBS | Task | Duration | Start | Finish | Predecessors | Complete | Remaining | Baseline start | Baseline finish | Baseline duration | Total slack | Free slack | Constraint | Resources | Work | Actual work |
| --- | --- | --- | --- | --- | --- | --- | --- | --- | --- | --- | --- | --- | --- | --- | --- | --- | --- |
| 27 | 4 | **QC4758-PACS00656914-Trafix Testing** | 6d | 2018-05-08 A | 2018-05-16 A |  | 100% |  | 2018-04-25 | 2018-05-21 | 18d |  |  |  |  | 32h | 32h |
| 28 | 4.1 | Testing | 3d | 2018-05-08 A | 2018-05-11 A | 23 | 100% |  | 2018-05-04 | 2018-05-10 | 4.17d |  |  | finish no earlier than 2018-05-08 | Anish | 24h | 24h |
| 29 | 4.2 | Test review | 1d | 2018-05-11 A | 2018-05-14 A | 28 | 100% |  | 2018-05-11 | 2018-05-11 | 1d |  |  |  | Pierre-Marie Born <PBorn@temenos.com> | 8h | 8h |
| 30 | 4.3 | Release from distribution | 2d | 2018-05-14 A | 2018-05-16 A | 29 | 100% |  |  |  |  |  |  |  |  |  |  |
| 31 | 5 | **QC4706 - Small Enhancement** | 40d | 2018-04-26 A | 2018-06-21 |  | 43% | 22.67d | 2018-04-26 | 2018-05-15 | 13d | 0d |  |  |  | 512h | 232h |
| 32 | 5.1 | Solution acceptance from Citco | 1d | 2018-04-26 A | 2018-04-26 A | 13 | 100% |  | 2018-04-26 | 2018-04-26 | 1d |  |  |  | Ben; Citco | 16h | 16h |
| 33 | 5.2 | Coding | 1d | 2018-05-11 A | 2018-05-14 A | 28 | 100% |  | 2018-05-04 | 2018-05-04 | 1d |  |  | start no earlier than 2018-05-10 | Anish | 8h | 8h |
| 34 | 5.3 | Unit testing | 1d | 2018-05-14 A | 2018-05-15 A | 33 | 100% |  | 2018-05-07 | 2018-05-07 | 1d |  |  |  | Anish | 8h | 8h |
| 35 | 5.4 | Code Review | 1d | 2018-05-15 A | 2018-05-16 A | 34 | 100% |  | 2018-05-08 | 2018-05-08 | 1d |  |  |  | Ben | 8h | 8h |
| 36 | 5.5 | PQC Testing | 9d | 2018-05-16 A | 2018-05-28 A | 35 | 100% |  | 2018-05-09 | 2018-05-09 | 1d |  |  |  | Aarthi | 72h | 72h |
| 37 | 5.6 | Release | 1d | 2018-05-29 A | 2018-05-29 A | 36 | 100% |  | 2018-05-15 | 2018-05-15 | 1d |  |  |  | IPRM | 8h | 8h |
| 38 | 5.7 | **QC4954 - EB.MANDATES does not take into account currency fluctuations** | 9d | 2018-05-23 A | 2018-06-04 |  | 57% | 3.86d | 2018-04-26 | 2018-05-15 | 13d | 13d |  |  |  | 56h | 32h |
| 39 | 5.7.1 | Solution acceptance from Citco | 1d | 2018-05-23 A | 2018-05-23 A |  | 100% |  | 2018-04-26 | 2018-04-26 | 1d |  |  | start no earlier than 2018-05-23 | Ben | 8h | 8h |
| 40 | 5.7.2 | Coding | 1d | 2018-05-28 A | 2018-05-28 A |  | 100% |  | 2018-05-04 | 2018-05-04 | 1d |  |  | start no earlier than 2018-05-28 | Anish | 8h | 8h |
| 41 | 5.7.3 | Unit testing | 1d | 2018-05-29 A | 2018-05-29 A | 40 | 100% |  | 2018-05-07 | 2018-05-07 | 1d |  |  |  | Anish | 8h | 8h |
| 42 | 5.7.4 | Code Review | 1d | 2018-05-30 A | 2018-05-30 A | 41 | 100% |  | 2018-05-08 | 2018-05-08 | 1d |  |  |  | Ben | 8h | 8h |
| 43 | 5.7.5 | PQC Testing | 2d | 2018-05-31 | 2018-06-01 | 42 |  |  | 2018-05-09 | 2018-05-09 | 1d | 14d | 0d | start no earlier than 2018-05-31 | PQC | 16h |  |
| 44 | 5.7.6 | Release | 1d | 2018-06-04 | 2018-06-04 | 43 |  |  | 2018-05-15 | 2018-05-15 | 1d | 14d |  | start no earlier than 2018-06-04 | IPRM | 8h |  |
| 45 | 5.8 | **Q4953 - At the time of population of CREDIT.ACCOUNT (AC type payments only) CREDIT.IBAN should be populated with the value from ACCOUNT or NULL** | 13d | 2018-05-23 A | 2018-06-08 |  | 38% | 8.12d | 2018-04-26 | 2018-05-15 | 13d | 9d |  |  |  | 128h | 48h |
| 46 | 5.8.1 | Solution acceptance from Citco | 1d | 2018-05-23 A | 2018-05-23 A |  | 100% |  | 2018-04-26 | 2018-04-26 | 1d |  |  | start no earlier than 2018-05-23 | Ben | 8h | 8h |
| 47 | 5.8.2 | Coding | 1d | 2018-05-29 A | 2018-05-29 A |  | 100% |  | 2018-05-04 | 2018-05-04 | 1d |  |  | start no earlier than 2018-05-29 | Anish | 8h | 8h |
| 48 | 5.8.3 | Unit testing | 2d | 2018-05-30 A | 2018-05-31 A | 47 | 100% |  | 2018-05-07 | 2018-05-07 | 1d |  |  |  | Anish | 16h | 16h |
| 49 | 5.8.4 | Code Review | 1d | 2018-06-01 A | 2018-06-01 A | 48 | 100% |  | 2018-05-08 | 2018-05-08 | 1d |  |  |  | Ben | 8h | 8h |
| 50 | 5.8.5 | PQC Testing | 2d | 2018-06-04 | 2018-06-05 | 49 |  |  | 2018-05-09 | 2018-05-09 | 1d | 12d | 0d | start no earlier than 2018-05-31 | PQC | 16h |  |
| 51 | 5.8.6 | Release | 1d | 2018-06-06 | 2018-06-06 | 50 |  |  | 2018-05-15 | 2018-05-15 | 1d | 12d |  | start no earlier than 2018-06-04 | IPRM | 8h |  |

| ID | WBS | Task | Duration | Start | Finish | Predecessors | Complete | Remaining | Baseline start | Baseline finish | Baseline duration | Total slack | Free slack | Constraint | Resources | Work | Actual work |
| --- | --- | --- | --- | --- | --- | --- | --- | --- | --- | --- | --- | --- | --- | --- | --- | --- | --- |
| 52 | 5.8.7 | **Q4987 - Continuation of defect 4954...EB.MANDATES does not take into account currency fluctuations - make fields available to CB** | 10d | 2018-05-28 A | 2018-06-08 |  | 13% | 8.75d | 2018-04-26 | 2018-05-15 | 13d | 9d |  |  |  | 64h | 8h |
| 53 | 5.8.7.1 | Solution acceptance from Citco | 1d | 2018-05-28 A | 2018-05-28 A |  | 100% |  | 2018-04-26 | 2018-04-26 | 1d |  |  | start no earlier than 2018-05-23 | Ben | 8h | 8h |
| 54 | 5.8.7.2 | Coding | 2d | 2018-05-31 | 2018-06-01 |  |  |  | 2018-05-04 | 2018-05-04 | 1d | 9d | 0d | start no earlier than 2018-05-31 | Anish | 16h |  |
| 55 | 5.8.7.3 | Unit testing | 1d | 2018-06-04 | 2018-06-04 | 54 |  |  | 2018-05-07 | 2018-05-07 | 1d | 10d | 0d |  | Anish | 8h |  |
| 56 | 5.8.7.4 | Code Review | 1d | 2018-06-05 | 2018-06-05 | 55 |  |  | 2018-05-08 | 2018-05-08 | 1d | 10d | 0d |  | Ben | 8h |  |
| 57 | 5.8.7.5 | PQC Testing | 2d | 2018-06-06 | 2018-06-07 | 56 |  |  | 2018-05-09 | 2018-05-09 | 1d | 10d | 0d | start no earlier than 2018-05-31 | PQC | 16h |  |
| 58 | 5.8.7.6 | Release | 1d | 2018-06-08 | 2018-06-08 | 57 |  |  | 2018-05-15 | 2018-05-15 | 1d | 10d |  | start no earlier than 2018-06-04 | IPRM | 8h |  |
| 59 | 5.9 | **Q4705 - Inputter and Authoriser user Ids not retained after payment executed from Treasury FX Lim Order Screen** | 22d | 2018-05-23 A | 2018-06-21 |  | 9% | 20.09d | 2018-04-26 | 2018-05-15 | 13d | 0d |  |  |  | 208h | 32h |
| 60 | 5.9.1 | Solution acceptance from Citco | 1d | 2018-05-30 | 2018-05-30 |  |  |  | 2018-04-26 | 2018-04-26 | 1d | 17d |  | start no earlier than 2018-05-30 | Citco; Ben | 16h |  |
| 61 | 5.9.2 | Coding | 1d | 2018-06-05 | 2018-06-05 |  |  |  | 2018-05-04 | 2018-05-04 | 1d | 7d | 0d | start no earlier than 2018-06-05 | Anish | 8h |  |
| 62 | 5.9.3 | Unit testing | 1d | 2018-06-06 | 2018-06-06 | 61 |  |  | 2018-05-07 | 2018-05-07 | 1d | 7d | 0d |  | Anish | 8h |  |
| 63 | 5.9.4 | Code Review | 1d | 2018-06-07 | 2018-06-07 | 62 |  |  | 2018-05-08 | 2018-05-08 | 1d | 7d | 0d |  | Ben | 8h |  |
| 64 | 5.9.5 | PQC Testing | 2d | 2018-06-08 | 2018-06-11 | 63 |  |  | 2018-05-09 | 2018-05-09 | 1d | 7d | 0d | start no earlier than 2018-05-31 | PQC | 16h |  |
| 65 | 5.9.6 | Release | 1d | 2018-06-12 | 2018-06-12 | 64 |  |  | 2018-05-15 | 2018-05-15 | 1d | 7d |  | start no earlier than 2018-06-04 | IPRM | 8h |  |
| 66 | 5.9.7 | **PACS00613300 (QC3369), PACS00613297 (QC3370) PACS00636603 (QC4400) - REWORK** | 22d | 2018-05-23 A | 2018-06-21 |  | 13% | 19.25d | 2018-04-26 | 2018-05-15 | 13d | 0d |  |  |  | 144h | 32h |
| 67 | 5.9.7.1 | Solution acceptance from Citco | 1d | 2018-05-23 A | 2018-05-23 A |  | 100% |  | 2018-04-26 | 2018-04-26 | 1d |  |  | start no earlier than 2018-05-23 | Citco; Ben | 16h | 16h |
| 68 | 5.9.7.2 | Coding | 1d | 2018-06-11 | 2018-06-11 |  |  |  | 2018-05-04 | 2018-05-04 | 1d | 3d | 0d | start no earlier than 2018-06-11 | Anish | 8h |  |
| 69 | 5.9.7.3 | Unit testing | 2d | 2018-06-12 | 2018-06-13 | 68 |  |  | 2018-05-07 | 2018-05-07 | 1d | 3d | 0d |  | Anish | 16h |  |
| 70 | 5.9.7.4 | Code Review | 1d | 2018-06-14 | 2018-06-14 | 69 |  |  | 2018-05-08 | 2018-05-08 | 1d | 3d | 0d |  | Ben | 8h |  |
| 71 | 5.9.7.5 | PQC Testing | 2d | 2018-06-15 | 2018-06-18 | 70 |  |  | 2018-05-09 | 2018-05-09 | 1d | 3d | 0d | start no earlier than 2018-05-31 | PQC | 16h |  |
| 72 | 5.9.7.6 | Release | 1d | 2018-06-19 | 2018-06-19 | 71 |  |  | 2018-05-15 | 2018-05-15 | 1d | 3d |  | start no earlier than 2018-06-04 | IPRM | 8h |  |
| 73 | 5.9.7.7 | **PACS00677619-QC4908-getting override messages for contradictory countries in Intermediary tab (on input/authorize/reject)** | 16d | 2018-05-31 A | 2018-06-21 |  | 13% | 14d | 2018-04-26 | 2018-05-15 | 13d | 0d |  |  |  | 72h | 16h |
| 74 | 5.9.7.7.1 | Solution acceptance from Citco | 1d | 2018-05-31 A | 2018-05-31 A |  | 100% |  | 2018-04-26 | 2018-04-26 | 1d |  |  | start no earlier than 2018-05-23 | Citco; Ben | 16h | 16h |
| 75 | 5.9.7.7.2 | Coding | 2d | 2018-06-13 | 2018-06-14 |  |  |  | 2018-05-04 | 2018-05-04 | 1d | 0d |  | start no earlier than 2018-06-13 | Anish | 16h |  |
| 76 | 5.9.7.7.3 | Unit testing | 1d | 2018-06-15 | 2018-06-15 | 75 |  |  | 2018-05-07 | 2018-05-07 | 1d | 0d |  |  | Anish | 8h |  |
| 77 | 5.9.7.7.4 | Code Review | 1d | 2018-06-18 | 2018-06-18 | 76 |  |  | 2018-05-08 | 2018-05-08 | 1d | 0d |  |  | Ben | 8h |  |
| 78 | 5.9.7.7.5 | PQC Testing | 2d | 2018-06-19 | 2018-06-20 | 77 |  |  | 2018-05-09 | 2018-05-09 | 1d | 0d |  | start no earlier than 2018-05-31 | PQC | 16h |  |
| 79 | 5.9.7.7.6 | Release | 1d | 2018-06-21 | 2018-06-21 | 78 |  |  | 2018-05-15 | 2018-05-15 | 1d | 0d |  | start no earlier than 2018-06-04 | IPRM | 8h |  |

| ID | WBS | Task | Duration | Start | Finish | Predecessors | Complete | Baseline start | Baseline finish | Baseline duration | Total slack | Constraint | Resources | Work | Actual work |
| --- | --- | --- | --- | --- | --- | --- | --- | --- | --- | --- | --- | --- | --- | --- | --- |
| 80 | 6 | **Defects** | 24d | 2018-04-25 A | 2018-05-29 A |  | 100% | 2018-04-25 | 2018-05-21 | 18d |  |  |  | 228h | 228h |
| 81 | 6.1 | **3369** | 11.5d | 2018-04-25 A | 2018-05-11 A |  | 100% | 2018-04-25 | 2018-05-21 | 18d |  |  |  | 84h | 84h |
| 82 | 6.1.1 | coding | 6d | 2018-04-25 A | 2018-05-03 A |  | 100% | 2018-04-25 | 2018-04-30 | 4d |  | finish no earlier than 2018-05-03 | Jeyaganesh | 48h | 48h |
| 83 | 6.1.2 | testing | 4d | 2018-05-03 A | 2018-05-08 A |  | 100% | 2018-05-02 | 2018-05-04 | 3d |  | finish no earlier than 2018-05-08 | PQC | 32h | 32h |
| 84 | 6.1.3 | release | 0.5d | 2018-05-11 A | 2018-05-11 A | 83FS+2d | 100% | 2018-05-09 | 2018-05-09 | 0.5d |  | start no earlier than 2018-05-07 | IPRM | 4h | 4h |
| 85 | 6.2 | **3370** | 8.5d | 2018-05-04 A | 2018-05-16 A |  | 100% | 2018-05-02 | 2018-05-09 | 5.5d |  |  |  | 60h | 60h |
| 86 | 6.2.1 | coding | 4d | 2018-05-04 A | 2018-05-09 A | 82 | 100% | 2018-05-02 | 2018-05-02 | 1d |  | finish no earlier than 2018-05-09 | Jeyaganesh | 32h | 32h |
| 87 | 6.2.2 | testing | 3d | 2018-05-10 A | 2018-05-14 A | 86 | 100% | 2018-05-03 | 2018-05-07 | 3d |  |  | PQC | 24h | 24h |
| 88 | 6.2.3 | release | 0.5d | 2018-05-16 A | 2018-05-16 A | 87FS+1d | 100% | 2018-05-09 | 2018-05-09 | 0.5d |  |  | IPRM | 4h | 4h |
| 89 | 6.3 | **4400** | 4.5d | 2018-05-10 A | 2018-05-16 A |  | 100% | 2018-04-25 | 2018-05-21 | 18d |  |  |  | 36h | 36h |
| 90 | 6.3.1 | coding | 1d | 2018-05-10 A | 2018-05-10 A | 86 | 100% | 2018-05-03 | 2018-05-03 | 1d |  |  | Jeyaganesh | 8h | 8h |
| 91 | 6.3.2 | testing | 3d | 2018-05-11 A | 2018-05-15 A | 90 | 100% | 2018-05-04 | 2018-05-08 | 3d |  |  | PQC | 24h | 24h |
| 92 | 6.3.3 | release | 0.5d | 2018-05-16 A | 2018-05-16 A | 91 | 100% | 2018-05-09 | 2018-05-09 | 0.5d |  |  | IPRM | 4h | 4h |
| 93 | 6.4 | **QC4950-PACS00674012** | 6d | 2018-05-22 A | 2018-05-29 A |  | 100% |  |  |  |  |  |  | 48h | 48h |
| 94 | 6.4.1 | Coding | 2d | 2018-05-22 A | 2018-05-23 A |  | 100% |  |  |  |  | start no earlier than 2018-05-22 | Anish | 16h | 16h |
| 95 | 6.4.2 | Testing | 1d | 2018-05-24 A | 2018-05-24 A | 94 | 100% |  |  |  |  |  | Anish | 8h | 8h |
| 96 | 6.4.3 | PQC Testing | 2d | 2018-05-25 A | 2018-05-28 A | 95 | 100% |  |  |  |  |  | PQC | 16h | 16h |
| 97 | 6.4.4 | Release | 1d | 2018-05-29 A | 2018-05-29 A | 96 | 100% |  |  |  |  |  | IPRM | 8h | 8h |
| 98 | 7 | TPS Parameter Packaging Utility | 1d | 2018-05-04 | 2018-05-04 |  |  | 2018-05-04 | 2018-05-04 | 1d | 35d | start no earlier than 2018-05-04 | NIko Popov | 8h |  |
| 99 | 8 | T24 KT Sessions to Services team | 10d | 2018-04-25 | 2018-05-09 |  |  |  |  |  | 32d |  | Ben | 80h |  |
| 100 | 9 | TCIB KT Sessions to Services team | 10d | 2018-05-14 | 2018-05-25 |  |  |  |  |  | 20d | start no earlier than 2018-05-14 | Sekar Murugan | 80h |  |

Notes:
- 98: Not planned yet under investigation
